# OneVA Pharmacy Implementation Schedule v2

Schedule from MS Project, 2015-09-30 to 2016-08-10.
Microsoft

## Calendars

- Standard: Mon-Fri 08:00-12:00, 13:00-17:00; Sat-Sun off.

## Schedule

| ID | WBS | Task | Type | Duration | Start | Finish | Constraint | Task ID |
| --- | --- | --- | --- | --- | --- | --- | --- | --- |
| 1 | 1 | **OneVA Pharmacy Implementation** |  | 131d | 2015-09-30 | 2016-03-30 |  |  |
| 2 | 1.1 | **PROJECT INITIATION** |  | 1d | 2015-09-30 | 2015-09-30 |  |  |
| 3 | 1.1.1 | **Milestone 0 Review and Brief Preparation** |  | 1d | 2015-09-30 | 2015-09-30 |  |  |
| 4 | 1.1.1.1 | Business Requirements Document (BRD) | manual | 1d | 2015-09-30 | 2015-09-30 |  | 5.2-1 |
| 5 | 1.1.2 | **Milestone 0 (MS0) Review Brief** |  | 1d | 2015-09-30 | 2015-09-30 |  |  |
| 6 | 1.1.2.1 | Schedule Milestone 0 Review | manual | 1d | 2015-09-30 | 2015-09-30 |  |  |
| 7 | 1.1.2.2 | Prepare MS0 Review Brief (include Team/stakeholders) | manual | 1d | 2015-09-30 | 2015-09-30 |  |  |
| 8 | 1.1.2.3 | Conduct Internal MS0 Meeting (Pre-Pre) | manual | 1d | 2015-09-30 | 2015-09-30 |  |  |
| 9 | 1.1.2.4 | Conduct MS0 Meeting (Pre-Brief) | manual | 1d | 2015-09-30 | 2015-09-30 |  |  |
| 10 | 1.1.2.5 | Conduct Milestone 0 Review Meeting and Deliver Brief | manual | 1d | 2015-09-30 | 2015-09-30 |  |  |
| 11 | 1.1.3 | **Acquisition** |  | 1d | 2015-09-30 | 2015-09-30 |  |  |
| 12 | 1.1.3.1 | Post Solicitation (Release Product Work Statement to Vendor | manual | 1d | 2015-09-30 | 2015-09-30 |  |  |
| 13 | 2 | **M: Contract Award** |  | 131d | 2015-09-30 | 2016-03-30 |  |  |
| 14 | 2.1 | **PROJECT PLANNING** |  | 1d | 2015-09-30 | 2015-09-30 |  |  |
| 15 | 2.1.1 | **Planning / Project Launch** |  | 1d | 2015-09-30 | 2015-09-30 |  |  |
| 16 | 2.1.1.1 | Release Registration & Planning | manual | 1d | 2015-09-30 | 2015-09-30 |  |  |
| 17 | 2.1.2 | **Project Launch / Kick off** |  | 1d | 2015-09-30 | 2015-09-30 |  |  |
| 18 | 2.1.2.1 | Prepare Kick off Agenda | manual | 6d | 2015-09-30 | 2015-10-07 |  |  |
| 19 | 2.1.2.2 | D: Deliver Contractor Staff Roster | manual | 8d | 2015-09-30 | 2015-10-09 |  | 0010 |
| 20 | 2.1.2.3 | D: Conduct Project Kick-off Meeting | manual | 1d | 2015-10-09 | 2015-10-09 |  | 5.1.1.B |
| 21 | 2.1.2.4 | Complete Kickoff Meeting Minutes | manual | 1d | 2015-10-09 | 2015-10-09 |  |  |
| 22 | 2.1.2.5 | **Kick off Documentation** |  | 10d | 2015-09-30 | 2015-10-13 |  |  |
| 23 | 2.1.2.5.1 | D: Create Primavera Project Schedule | manual | 10d | 2015-09-30 | 2015-10-13 |  | 5.1.1.C |
| 24 | 2.1.2.5.2 | **D: Monthly Progress Report** |  | 110d | 2015-11-06 | 2016-04-07 |  | 5.1.2.A |
| 25 | 2.1.2.5.2.1 | D: Monthly Progress Report 1 | manual | 1d | 2015-12-05 | 2015-12-05 | start no earlier than 2015-12-05 |  |
| 26 | 2.1.2.5.2.2 | D: Monthly Progress Report 2 | manual | 1d | 2016-01-05 | 2016-01-05 | start no earlier than 2016-01-05 |  |
| 27 | 2.1.2.5.2.3 | D: Monthly Progress Report 3 | manual | 1d | 2016-02-05 | 2016-02-05 | start no earlier than 2016-02-05 |  |
| 28 | 2.1.2.5.2.4 | D: Monthly Progress Report 4 | manual | 1d | 2016-03-05 | 2016-03-05 | start no earlier than 2016-03-05 |  |
| 29 | 2.1.2.5.2.5 | D: Monthly Progress Report 5 | manual | 1d | 2016-04-05 | 2016-04-05 | start no earlier than 2016-04-05 |  |
| 30 | 2.1.2.5.2.6 | D: Monthly Progress Report 6 | manual | 1d | 2016-05-05 | 2016-05-05 | start no earlier than 2016-05-05 |  |

Notes:
- 3: In reality the Mileston 0 activies all occurred on the VA side as they prepared the solicitation and have their review and selection activities. Our actions commence at Contract Award post Milestone 0

| ID | WBS | Task | Type | Duration | Start | Finish | Total slack | Constraint | Task ID |
| --- | --- | --- | --- | --- | --- | --- | --- | --- | --- |
| 31 | 2.1.2.5.3 | **VistA Patch Coordination Meetings and FORUM entry** |  | 126d | 2015-09-30 | 2016-03-23 | 0d |  | 5.1.4.1 |
| 32 | 2.1.2.5.3.1 | VistA Patch Coordination Meetings and FORUM entry 1 | manual | 1d | 2015-09-30 | 2015-09-30 |  | start no earlier than 2015-09-30 |  |
| 33 | 2.1.2.5.3.2 | VistA Patch Coordination Meetings and FORUM entry 2 | manual | 1d | 2015-10-07 | 2015-10-07 |  | start no earlier than 2015-10-07 |  |
| 34 | 2.1.2.5.3.3 | VistA Patch Coordination Meetings and FORUM entry 3 | manual | 1d | 2015-10-14 | 2015-10-14 |  | start no earlier than 2015-10-14 |  |
| 35 | 2.1.2.5.3.4 | VistA Patch Coordination Meetings and FORUM entry 4 | manual | 1d | 2015-10-21 | 2015-10-21 |  | start no earlier than 2015-10-21 |  |
| 36 | 2.1.2.5.3.5 | VistA Patch Coordination Meetings and FORUM entry 5 | manual | 1d | 2015-10-28 | 2015-10-28 |  | start no earlier than 2015-10-28 |  |
| 37 | 2.1.2.5.3.6 | VistA Patch Coordination Meetings and FORUM entry 6 | manual | 1d | 2015-11-04 | 2015-11-04 |  | start no earlier than 2015-11-04 |  |
| 38 | 2.1.2.5.3.7 | VistA Patch Coordination Meetings and FORUM entry 7 | manual | 1d | 2015-11-11 | 2015-11-11 |  | start no earlier than 2015-11-11 |  |
| 39 | 2.1.2.5.3.8 | VistA Patch Coordination Meetings and FORUM entry 8 | manual | 1d | 2015-11-18 | 2015-11-18 |  | start no earlier than 2015-11-18 |  |
| 40 | 2.1.2.5.3.9 | VistA Patch Coordination Meetings and FORUM entry 9 | manual | 1d | 2015-11-25 | 2015-11-25 |  | start no earlier than 2015-11-25 |  |
| 41 | 2.1.2.5.3.10 | VistA Patch Coordination Meetings and FORUM entry 10 | manual | 1d | 2015-12-02 | 2015-12-02 |  | start no earlier than 2015-12-02 |  |
| 42 | 2.1.2.5.3.11 | VistA Patch Coordination Meetings and FORUM entry 11 | manual | 1d | 2015-12-09 | 2015-12-09 |  | start no earlier than 2015-12-09 |  |
| 43 | 2.1.2.5.3.12 | VistA Patch Coordination Meetings and FORUM entry 12 | manual | 1d | 2015-12-16 | 2015-12-16 |  | start no earlier than 2015-12-16 |  |
| 44 | 2.1.2.5.3.13 | VistA Patch Coordination Meetings and FORUM entry 13 | manual | 1d | 2015-12-23 | 2015-12-23 |  | start no earlier than 2015-12-23 |  |
| 45 | 2.1.2.5.3.14 | VistA Patch Coordination Meetings and FORUM entry 14 | manual | 1d | 2015-12-30 | 2015-12-30 |  | start no earlier than 2015-12-30 |  |
| 46 | 2.1.2.5.3.15 | VistA Patch Coordination Meetings and FORUM entry 15 | manual | 1d | 2016-01-06 | 2016-01-06 |  | start no earlier than 2016-01-06 |  |
| 47 | 2.1.2.5.3.16 | VistA Patch Coordination Meetings and FORUM entry 16 | manual | 1d | 2016-01-13 | 2016-01-13 |  | start no earlier than 2016-01-13 |  |
| 48 | 2.1.2.5.3.17 | VistA Patch Coordination Meetings and FORUM entry 17 | manual | 1d | 2016-01-20 | 2016-01-20 |  | start no earlier than 2016-01-20 |  |
| 49 | 2.1.2.5.3.18 | VistA Patch Coordination Meetings and FORUM entry 18 | manual | 1d | 2016-01-27 | 2016-01-27 |  | start no earlier than 2016-01-27 |  |
| 50 | 2.1.2.5.3.19 | VistA Patch Coordination Meetings and FORUM entry 19 | manual | 1d | 2016-02-03 | 2016-02-03 |  | start no earlier than 2016-02-03 |  |
| 51 | 2.1.2.5.3.20 | VistA Patch Coordination Meetings and FORUM entry 20 | manual | 1d | 2016-02-10 | 2016-02-10 |  | start no earlier than 2016-02-10 |  |
| 52 | 2.1.2.5.3.21 | VistA Patch Coordination Meetings and FORUM entry 21 | manual | 1d | 2016-02-17 | 2016-02-17 |  | start no earlier than 2016-02-17 |  |
| 53 | 2.1.2.5.3.22 | VistA Patch Coordination Meetings and FORUM entry 22 | manual | 1d | 2016-02-24 | 2016-02-24 |  | start no earlier than 2016-02-24 |  |
| 54 | 2.1.2.5.3.23 | VistA Patch Coordination Meetings and FORUM entry 23 | manual | 1d | 2016-03-02 | 2016-03-02 |  | start no earlier than 2016-03-02 |  |
| 55 | 2.1.2.5.3.24 | VistA Patch Coordination Meetings and FORUM entry 24 | manual | 1d | 2016-03-09 | 2016-03-09 |  | start no earlier than 2016-03-09 |  |
| 56 | 2.1.2.5.3.25 | VistA Patch Coordination Meetings and FORUM entry 25 | manual | 1d | 2016-03-16 | 2016-03-16 |  | start no earlier than 2016-03-16 |  |
| 57 | 2.1.2.5.3.26 | VistA Patch Coordination Meetings and FORUM entry 26 | manual | 1d | 2016-03-23 | 2016-03-23 |  | start no earlier than 2016-03-23 |  |

| ID | WBS | Task | Type | Duration | Start | Finish | Constraint | Task ID |
| --- | --- | --- | --- | --- | --- | --- | --- | --- |
| 58 | 2.1.2.5.4 | **Daily Stand Up Call** |  | 131d | 2015-09-30 | 2016-03-30 |  | 5.1.4.3 |
| 59 | 2.1.2.5.4.1 | Daily Stand Up Call 1 | manual | 1d | 2015-09-30 | 2015-09-30 | start no earlier than 2015-09-30 |  |
| 60 | 2.1.2.5.4.2 | Daily Stand Up Call 2 | manual | 1d | 2015-10-01 | 2015-10-01 | start no earlier than 2015-10-01 |  |
| 61 | 2.1.2.5.4.3 | Daily Stand Up Call 3 | manual | 1d | 2015-10-02 | 2015-10-02 | start no earlier than 2015-10-02 |  |
| 62 | 2.1.2.5.4.4 | Daily Stand Up Call 4 | manual | 1d | 2015-10-05 | 2015-10-05 | start no earlier than 2015-10-05 |  |
| 63 | 2.1.2.5.4.5 | Daily Stand Up Call 5 | manual | 1d | 2015-10-06 | 2015-10-06 | start no earlier than 2015-10-06 |  |
| 64 | 2.1.2.5.4.6 | Daily Stand Up Call 6 | manual | 1d | 2015-10-07 | 2015-10-07 | start no earlier than 2015-10-07 |  |
| 65 | 2.1.2.5.4.7 | Daily Stand Up Call 7 | manual | 1d | 2015-10-08 | 2015-10-08 | start no earlier than 2015-10-08 |  |
| 66 | 2.1.2.5.4.8 | Daily Stand Up Call 8 | manual | 1d | 2015-10-09 | 2015-10-09 | start no earlier than 2015-10-09 |  |
| 67 | 2.1.2.5.4.9 | Daily Stand Up Call 9 | manual | 1d | 2015-10-12 | 2015-10-12 | start no earlier than 2015-10-12 |  |
| 68 | 2.1.2.5.4.10 | Daily Stand Up Call 10 | manual | 1d | 2015-10-13 | 2015-10-13 | start no earlier than 2015-10-13 |  |
| 69 | 2.1.2.5.4.11 | Daily Stand Up Call 11 | manual | 1d | 2015-10-14 | 2015-10-14 | start no earlier than 2015-10-14 |  |
| 70 | 2.1.2.5.4.12 | Daily Stand Up Call 12 | manual | 1d | 2015-10-15 | 2015-10-15 | start no earlier than 2015-10-15 |  |
| 71 | 2.1.2.5.4.13 | Daily Stand Up Call 13 | manual | 1d | 2015-10-16 | 2015-10-16 | start no earlier than 2015-10-16 |  |
| 72 | 2.1.2.5.4.14 | Daily Stand Up Call 14 | manual | 1d | 2015-10-19 | 2015-10-19 | start no earlier than 2015-10-19 |  |
| 73 | 2.1.2.5.4.15 | Daily Stand Up Call 15 | manual | 1d | 2015-10-20 | 2015-10-20 | start no earlier than 2015-10-20 |  |
| 74 | 2.1.2.5.4.16 | Daily Stand Up Call 16 | manual | 1d | 2015-10-21 | 2015-10-21 | start no earlier than 2015-10-21 |  |
| 75 | 2.1.2.5.4.17 | Daily Stand Up Call 17 | manual | 1d | 2015-10-22 | 2015-10-22 | start no earlier than 2015-10-22 |  |
| 76 | 2.1.2.5.4.18 | Daily Stand Up Call 18 | manual | 1d | 2015-10-23 | 2015-10-23 | start no earlier than 2015-10-23 |  |
| 77 | 2.1.2.5.4.19 | Daily Stand Up Call 19 | manual | 1d | 2015-10-26 | 2015-10-26 | start no earlier than 2015-10-26 |  |
| 78 | 2.1.2.5.4.20 | Daily Stand Up Call 20 | manual | 1d | 2015-10-27 | 2015-10-27 | start no earlier than 2015-10-27 |  |
| 79 | 2.1.2.5.4.21 | Daily Stand Up Call 21 | manual | 1d | 2015-10-28 | 2015-10-28 | start no earlier than 2015-10-28 |  |
| 80 | 2.1.2.5.4.22 | Daily Stand Up Call 22 | manual | 1d | 2015-10-29 | 2015-10-29 | start no earlier than 2015-10-29 |  |
| 81 | 2.1.2.5.4.23 | Daily Stand Up Call 23 | manual | 1d | 2015-10-30 | 2015-10-30 | start no earlier than 2015-10-30 |  |
| 82 | 2.1.2.5.4.24 | Daily Stand Up Call 24 | manual | 1d | 2015-11-02 | 2015-11-02 | start no earlier than 2015-11-02 |  |
| 83 | 2.1.2.5.4.25 | Daily Stand Up Call 25 | manual | 1d | 2015-11-03 | 2015-11-03 | start no earlier than 2015-11-03 |  |
| 84 | 2.1.2.5.4.26 | Daily Stand Up Call 26 | manual | 1d | 2015-11-04 | 2015-11-04 | start no earlier than 2015-11-04 |  |
| 85 | 2.1.2.5.4.27 | Daily Stand Up Call 27 | manual | 1d | 2015-11-05 | 2015-11-05 | start no earlier than 2015-11-05 |  |
| 86 | 2.1.2.5.4.28 | Daily Stand Up Call 28 | manual | 1d | 2015-11-06 | 2015-11-06 | start no earlier than 2015-11-06 |  |
| 87 | 2.1.2.5.4.29 | Daily Stand Up Call 29 | manual | 1d | 2015-11-09 | 2015-11-09 | start no earlier than 2015-11-09 |  |
| 88 | 2.1.2.5.4.30 | Daily Stand Up Call 30 | manual | 1d | 2015-11-10 | 2015-11-10 | start no earlier than 2015-11-10 |  |
| 89 | 2.1.2.5.4.31 | Daily Stand Up Call 31 | manual | 1d | 2015-11-11 | 2015-11-11 | start no earlier than 2015-11-11 |  |
| 90 | 2.1.2.5.4.32 | Daily Stand Up Call 32 | manual | 1d | 2015-11-12 | 2015-11-12 | start no earlier than 2015-11-12 |  |
| 91 | 2.1.2.5.4.33 | Daily Stand Up Call 33 | manual | 1d | 2015-11-13 | 2015-11-13 | start no earlier than 2015-11-13 |  |
| 92 | 2.1.2.5.4.34 | Daily Stand Up Call 34 | manual | 1d | 2015-11-16 | 2015-11-16 | start no earlier than 2015-11-16 |  |
| 93 | 2.1.2.5.4.35 | Daily Stand Up Call 35 | manual | 1d | 2015-11-17 | 2015-11-17 | start no earlier than 2015-11-17 |  |
| 94 | 2.1.2.5.4.36 | Daily Stand Up Call 36 | manual | 1d | 2015-11-18 | 2015-11-18 | start no earlier than 2015-11-18 |  |
| 95 | 2.1.2.5.4.37 | Daily Stand Up Call 37 | manual | 1d | 2015-11-19 | 2015-11-19 | start no earlier than 2015-11-19 |  |
| 96 | 2.1.2.5.4.38 | Daily Stand Up Call 38 | manual | 1d | 2015-11-20 | 2015-11-20 | start no earlier than 2015-11-20 |  |
| 97 | 2.1.2.5.4.39 | Daily Stand Up Call 39 | manual | 1d | 2015-11-23 | 2015-11-23 | start no earlier than 2015-11-23 |  |
| 98 | 2.1.2.5.4.40 | Daily Stand Up Call 40 | manual | 1d | 2015-11-24 | 2015-11-24 | start no earlier than 2015-11-24 |  |
| 99 | 2.1.2.5.4.41 | Daily Stand Up Call 41 | manual | 1d | 2015-11-25 | 2015-11-25 | start no earlier than 2015-11-25 |  |
| 100 | 2.1.2.5.4.42 | Daily Stand Up Call 42 | manual | 1d | 2015-11-26 | 2015-11-26 | start no earlier than 2015-11-26 |  |
| 101 | 2.1.2.5.4.43 | Daily Stand Up Call 43 | manual | 1d | 2015-11-27 | 2015-11-27 | start no earlier than 2015-11-27 |  |
| 102 | 2.1.2.5.4.44 | Daily Stand Up Call 44 | manual | 1d | 2015-11-30 | 2015-11-30 | start no earlier than 2015-11-30 |  |
| 103 | 2.1.2.5.4.45 | Daily Stand Up Call 45 | manual | 1d | 2015-12-01 | 2015-12-01 | start no earlier than 2015-12-01 |  |
| 104 | 2.1.2.5.4.46 | Daily Stand Up Call 46 | manual | 1d | 2015-12-02 | 2015-12-02 | start no earlier than 2015-12-02 |  |
| 105 | 2.1.2.5.4.47 | Daily Stand Up Call 47 | manual | 1d | 2015-12-03 | 2015-12-03 | start no earlier than 2015-12-03 |  |
| 106 | 2.1.2.5.4.48 | Daily Stand Up Call 48 | manual | 1d | 2015-12-04 | 2015-12-04 | start no earlier than 2015-12-04 |  |
| 107 | 2.1.2.5.4.49 | Daily Stand Up Call 49 | manual | 1d | 2015-12-07 | 2015-12-07 | start no earlier than 2015-12-07 |  |
| 108 | 2.1.2.5.4.50 | Daily Stand Up Call 50 | manual | 1d | 2015-12-08 | 2015-12-08 | start no earlier than 2015-12-08 |  |
| 109 | 2.1.2.5.4.51 | Daily Stand Up Call 51 | manual | 1d | 2015-12-09 | 2015-12-09 | start no earlier than 2015-12-09 |  |
| 110 | 2.1.2.5.4.52 | Daily Stand Up Call 52 | manual | 1d | 2015-12-10 | 2015-12-10 | start no earlier than 2015-12-10 |  |
| 111 | 2.1.2.5.4.53 | Daily Stand Up Call 53 | manual | 1d | 2015-12-11 | 2015-12-11 | start no earlier than 2015-12-11 |  |
| 112 | 2.1.2.5.4.54 | Daily Stand Up Call 54 | manual | 1d | 2015-12-14 | 2015-12-14 | start no earlier than 2015-12-14 |  |
| 113 | 2.1.2.5.4.55 | Daily Stand Up Call 55 | manual | 1d | 2015-12-15 | 2015-12-15 | start no earlier than 2015-12-15 |  |
| 114 | 2.1.2.5.4.56 | Daily Stand Up Call 56 | manual | 1d | 2015-12-16 | 2015-12-16 | start no earlier than 2015-12-16 |  |
| 115 | 2.1.2.5.4.57 | Daily Stand Up Call 57 | manual | 1d | 2015-12-17 | 2015-12-17 | start no earlier than 2015-12-17 |  |
| 116 | 2.1.2.5.4.58 | Daily Stand Up Call 58 | manual | 1d | 2015-12-18 | 2015-12-18 | start no earlier than 2015-12-18 |  |
| 117 | 2.1.2.5.4.59 | Daily Stand Up Call 59 | manual | 1d | 2015-12-21 | 2015-12-21 | start no earlier than 2015-12-21 |  |
| 118 | 2.1.2.5.4.60 | Daily Stand Up Call 60 | manual | 1d | 2015-12-22 | 2015-12-22 | start no earlier than 2015-12-22 |  |
| 119 | 2.1.2.5.4.61 | Daily Stand Up Call 61 | manual | 1d | 2015-12-23 | 2015-12-23 | start no earlier than 2015-12-23 |  |
| 120 | 2.1.2.5.4.62 | Daily Stand Up Call 62 | manual | 1d | 2015-12-24 | 2015-12-24 | start no earlier than 2015-12-24 |  |
| 121 | 2.1.2.5.4.63 | Daily Stand Up Call 63 | manual | 1d | 2015-12-25 | 2015-12-25 | start no earlier than 2015-12-25 |  |
| 122 | 2.1.2.5.4.64 | Daily Stand Up Call 64 | manual | 1d | 2015-12-28 | 2015-12-28 | start no earlier than 2015-12-28 |  |
| 123 | 2.1.2.5.4.65 | Daily Stand Up Call 65 | manual | 1d | 2015-12-29 | 2015-12-29 | start no earlier than 2015-12-29 |  |
| 124 | 2.1.2.5.4.66 | Daily Stand Up Call 66 | manual | 1d | 2015-12-30 | 2015-12-30 | start no earlier than 2015-12-30 |  |
| 125 | 2.1.2.5.4.67 | Daily Stand Up Call 67 | manual | 1d | 2015-12-31 | 2015-12-31 | start no earlier than 2015-12-31 |  |
| 126 | 2.1.2.5.4.68 | Daily Stand Up Call 68 | manual | 1d | 2016-01-01 | 2016-01-01 | start no earlier than 2016-01-01 |  |
| 127 | 2.1.2.5.4.69 | Daily Stand Up Call 69 | manual | 1d | 2016-01-04 | 2016-01-04 | start no earlier than 2016-01-04 |  |

| ID | WBS | Task | Type | Duration | Start | Finish | Constraint |
| --- | --- | --- | --- | --- | --- | --- | --- |
| 128 | 2.1.2.5.4.70 | Daily Stand Up Call 70 | manual | 1d | 2016-01-05 | 2016-01-05 | start no earlier than 2016-01-05 |
| 129 | 2.1.2.5.4.71 | Daily Stand Up Call 71 | manual | 1d | 2016-01-06 | 2016-01-06 | start no earlier than 2016-01-06 |
| 130 | 2.1.2.5.4.72 | Daily Stand Up Call 72 | manual | 1d | 2016-01-07 | 2016-01-07 | start no earlier than 2016-01-07 |
| 131 | 2.1.2.5.4.73 | Daily Stand Up Call 73 | manual | 1d | 2016-01-08 | 2016-01-08 | start no earlier than 2016-01-08 |
| 132 | 2.1.2.5.4.74 | Daily Stand Up Call 74 | manual | 1d | 2016-01-11 | 2016-01-11 | start no earlier than 2016-01-11 |
| 133 | 2.1.2.5.4.75 | Daily Stand Up Call 75 | manual | 1d | 2016-01-12 | 2016-01-12 | start no earlier than 2016-01-12 |
| 134 | 2.1.2.5.4.76 | Daily Stand Up Call 76 | manual | 1d | 2016-01-13 | 2016-01-13 | start no earlier than 2016-01-13 |
| 135 | 2.1.2.5.4.77 | Daily Stand Up Call 77 | manual | 1d | 2016-01-14 | 2016-01-14 | start no earlier than 2016-01-14 |
| 136 | 2.1.2.5.4.78 | Daily Stand Up Call 78 | manual | 1d | 2016-01-15 | 2016-01-15 | start no earlier than 2016-01-15 |
| 137 | 2.1.2.5.4.79 | Daily Stand Up Call 79 | manual | 1d | 2016-01-18 | 2016-01-18 | start no earlier than 2016-01-18 |
| 138 | 2.1.2.5.4.80 | Daily Stand Up Call 80 | manual | 1d | 2016-01-19 | 2016-01-19 | start no earlier than 2016-01-19 |
| 139 | 2.1.2.5.4.81 | Daily Stand Up Call 81 | manual | 1d | 2016-01-20 | 2016-01-20 | start no earlier than 2016-01-20 |
| 140 | 2.1.2.5.4.82 | Daily Stand Up Call 82 | manual | 1d | 2016-01-21 | 2016-01-21 | start no earlier than 2016-01-21 |
| 141 | 2.1.2.5.4.83 | Daily Stand Up Call 83 | manual | 1d | 2016-01-22 | 2016-01-22 | start no earlier than 2016-01-22 |
| 142 | 2.1.2.5.4.84 | Daily Stand Up Call 84 | manual | 1d | 2016-01-25 | 2016-01-25 | start no earlier than 2016-01-25 |
| 143 | 2.1.2.5.4.85 | Daily Stand Up Call 85 | manual | 1d | 2016-01-26 | 2016-01-26 | start no earlier than 2016-01-26 |
| 144 | 2.1.2.5.4.86 | Daily Stand Up Call 86 | manual | 1d | 2016-01-27 | 2016-01-27 | start no earlier than 2016-01-27 |
| 145 | 2.1.2.5.4.87 | Daily Stand Up Call 87 | manual | 1d | 2016-01-28 | 2016-01-28 | start no earlier than 2016-01-28 |
| 146 | 2.1.2.5.4.88 | Daily Stand Up Call 88 | manual | 1d | 2016-01-29 | 2016-01-29 | start no earlier than 2016-01-29 |
| 147 | 2.1.2.5.4.89 | Daily Stand Up Call 89 | manual | 1d | 2016-02-01 | 2016-02-01 | start no earlier than 2016-02-01 |
| 148 | 2.1.2.5.4.90 | Daily Stand Up Call 90 | manual | 1d | 2016-02-02 | 2016-02-02 | start no earlier than 2016-02-02 |
| 149 | 2.1.2.5.4.91 | Daily Stand Up Call 91 | manual | 1d | 2016-02-03 | 2016-02-03 | start no earlier than 2016-02-03 |
| 150 | 2.1.2.5.4.92 | Daily Stand Up Call 92 | manual | 1d | 2016-02-04 | 2016-02-04 | start no earlier than 2016-02-04 |
| 151 | 2.1.2.5.4.93 | Daily Stand Up Call 93 | manual | 1d | 2016-02-05 | 2016-02-05 | start no earlier than 2016-02-05 |
| 152 | 2.1.2.5.4.94 | Daily Stand Up Call 94 | manual | 1d | 2016-02-08 | 2016-02-08 | start no earlier than 2016-02-08 |
| 153 | 2.1.2.5.4.95 | Daily Stand Up Call 95 | manual | 1d | 2016-02-09 | 2016-02-09 | start no earlier than 2016-02-09 |
| 154 | 2.1.2.5.4.96 | Daily Stand Up Call 96 | manual | 1d | 2016-02-10 | 2016-02-10 | start no earlier than 2016-02-10 |
| 155 | 2.1.2.5.4.97 | Daily Stand Up Call 97 | manual | 1d | 2016-02-11 | 2016-02-11 | start no earlier than 2016-02-11 |
| 156 | 2.1.2.5.4.98 | Daily Stand Up Call 98 | manual | 1d | 2016-02-12 | 2016-02-12 | start no earlier than 2016-02-12 |
| 157 | 2.1.2.5.4.99 | Daily Stand Up Call 99 | manual | 1d | 2016-02-15 | 2016-02-15 | start no earlier than 2016-02-15 |
| 158 | 2.1.2.5.4.100 | Daily Stand Up Call 100 | manual | 1d | 2016-02-16 | 2016-02-16 | start no earlier than 2016-02-16 |
| 159 | 2.1.2.5.4.101 | Daily Stand Up Call 101 | manual | 1d | 2016-02-17 | 2016-02-17 | start no earlier than 2016-02-17 |
| 160 | 2.1.2.5.4.102 | Daily Stand Up Call 102 | manual | 1d | 2016-02-18 | 2016-02-18 | start no earlier than 2016-02-18 |
| 161 | 2.1.2.5.4.103 | Daily Stand Up Call 103 | manual | 1d | 2016-02-19 | 2016-02-19 | start no earlier than 2016-02-19 |
| 162 | 2.1.2.5.4.104 | Daily Stand Up Call 104 | manual | 1d | 2016-02-22 | 2016-02-22 | start no earlier than 2016-02-22 |
| 163 | 2.1.2.5.4.105 | Daily Stand Up Call 105 | manual | 1d | 2016-02-23 | 2016-02-23 | start no earlier than 2016-02-23 |
| 164 | 2.1.2.5.4.106 | Daily Stand Up Call 106 | manual | 1d | 2016-02-24 | 2016-02-24 | start no earlier than 2016-02-24 |
| 165 | 2.1.2.5.4.107 | Daily Stand Up Call 107 | manual | 1d | 2016-02-25 | 2016-02-25 | start no earlier than 2016-02-25 |
| 166 | 2.1.2.5.4.108 | Daily Stand Up Call 108 | manual | 1d | 2016-02-26 | 2016-02-26 | start no earlier than 2016-02-26 |
| 167 | 2.1.2.5.4.109 | Daily Stand Up Call 109 | manual | 1d | 2016-02-29 | 2016-02-29 | start no earlier than 2016-02-29 |
| 168 | 2.1.2.5.4.110 | Daily Stand Up Call 110 | manual | 1d | 2016-03-01 | 2016-03-01 | start no earlier than 2016-03-01 |
| 169 | 2.1.2.5.4.111 | Daily Stand Up Call 111 | manual | 1d | 2016-03-02 | 2016-03-02 | start no earlier than 2016-03-02 |
| 170 | 2.1.2.5.4.112 | Daily Stand Up Call 112 | manual | 1d | 2016-03-03 | 2016-03-03 | start no earlier than 2016-03-03 |
| 171 | 2.1.2.5.4.113 | Daily Stand Up Call 113 | manual | 1d | 2016-03-04 | 2016-03-04 | start no earlier than 2016-03-04 |
| 172 | 2.1.2.5.4.114 | Daily Stand Up Call 114 | manual | 1d | 2016-03-07 | 2016-03-07 | start no earlier than 2016-03-07 |
| 173 | 2.1.2.5.4.115 | Daily Stand Up Call 115 | manual | 1d | 2016-03-08 | 2016-03-08 | start no earlier than 2016-03-08 |
| 174 | 2.1.2.5.4.116 | Daily Stand Up Call 116 | manual | 1d | 2016-03-09 | 2016-03-09 | start no earlier than 2016-03-09 |
| 175 | 2.1.2.5.4.117 | Daily Stand Up Call 117 | manual | 1d | 2016-03-10 | 2016-03-10 | start no earlier than 2016-03-10 |
| 176 | 2.1.2.5.4.118 | Daily Stand Up Call 118 | manual | 1d | 2016-03-11 | 2016-03-11 | start no earlier than 2016-03-11 |
| 177 | 2.1.2.5.4.119 | Daily Stand Up Call 119 | manual | 1d | 2016-03-14 | 2016-03-14 | start no earlier than 2016-03-14 |
| 178 | 2.1.2.5.4.120 | Daily Stand Up Call 120 | manual | 1d | 2016-03-15 | 2016-03-15 | start no earlier than 2016-03-15 |
| 179 | 2.1.2.5.4.121 | Daily Stand Up Call 121 | manual | 1d | 2016-03-16 | 2016-03-16 | start no earlier than 2016-03-16 |
| 180 | 2.1.2.5.4.122 | Daily Stand Up Call 122 | manual | 1d | 2016-03-17 | 2016-03-17 | start no earlier than 2016-03-17 |
| 181 | 2.1.2.5.4.123 | Daily Stand Up Call 123 | manual | 1d | 2016-03-18 | 2016-03-18 | start no earlier than 2016-03-18 |
| 182 | 2.1.2.5.4.124 | Daily Stand Up Call 124 | manual | 1d | 2016-03-21 | 2016-03-21 | start no earlier than 2016-03-21 |
| 183 | 2.1.2.5.4.125 | Daily Stand Up Call 125 | manual | 1d | 2016-03-22 | 2016-03-22 | start no earlier than 2016-03-22 |
| 184 | 2.1.2.5.4.126 | Daily Stand Up Call 126 | manual | 1d | 2016-03-23 | 2016-03-23 | start no earlier than 2016-03-23 |
| 185 | 2.1.2.5.4.127 | Daily Stand Up Call 127 | manual | 1d | 2016-03-24 | 2016-03-24 | start no earlier than 2016-03-24 |
| 186 | 2.1.2.5.4.128 | Daily Stand Up Call 128 | manual | 1d | 2016-03-25 | 2016-03-25 | start no earlier than 2016-03-25 |
| 187 | 2.1.2.5.4.129 | Daily Stand Up Call 129 | manual | 1d | 2016-03-28 | 2016-03-28 | start no earlier than 2016-03-28 |

| ID | WBS | Task | Type | Duration | Start | Finish | Total slack | Constraint | Task ID |
| --- | --- | --- | --- | --- | --- | --- | --- | --- | --- |
| 188 | 2.1.2.5.5 | **IPT Meetings** |  | 121d | 2015-10-06 | 2016-03-22 | 0d |  | 5.1.4.2 |
| 189 | 2.1.2.5.5.1 | IPT Meetings 1 | manual | 1d | 2015-10-06 | 2015-10-06 |  | start no earlier than 2015-10-06 |  |
| 190 | 2.1.2.5.5.2 | IPT Meetings 2 | manual | 1d | 2015-10-13 | 2015-10-13 |  | start no earlier than 2015-10-13 |  |
| 191 | 2.1.2.5.5.3 | IPT Meetings 3 | manual | 1d | 2015-10-20 | 2015-10-20 |  | start no earlier than 2015-10-20 |  |
| 192 | 2.1.2.5.5.4 | IPT Meetings 4 | manual | 1d | 2015-10-27 | 2015-10-27 |  | start no earlier than 2015-10-27 |  |
| 193 | 2.1.2.5.5.5 | IPT Meetings 5 | manual | 1d | 2015-11-03 | 2015-11-03 |  | start no earlier than 2015-11-03 |  |
| 194 | 2.1.2.5.5.6 | IPT Meetings 6 | manual | 1d | 2015-11-10 | 2015-11-10 |  | start no earlier than 2015-11-10 |  |
| 195 | 2.1.2.5.5.7 | IPT Meetings 7 | manual | 1d | 2015-11-17 | 2015-11-17 |  | start no earlier than 2015-11-17 |  |
| 196 | 2.1.2.5.5.8 | IPT Meetings 8 | manual | 1d | 2015-11-24 | 2015-11-24 |  | start no earlier than 2015-11-24 |  |
| 197 | 2.1.2.5.5.9 | IPT Meetings 9 | manual | 1d | 2015-12-01 | 2015-12-01 |  | start no earlier than 2015-12-01 |  |
| 198 | 2.1.2.5.5.10 | IPT Meetings 10 | manual | 1d | 2015-12-08 | 2015-12-08 |  | start no earlier than 2015-12-08 |  |
| 199 | 2.1.2.5.5.11 | IPT Meetings 11 | manual | 1d | 2015-12-15 | 2015-12-15 |  | start no earlier than 2015-12-15 |  |
| 200 | 2.1.2.5.5.12 | IPT Meetings 12 | manual | 1d | 2015-12-22 | 2015-12-22 |  | start no earlier than 2015-12-22 |  |
| 201 | 2.1.2.5.5.13 | IPT Meetings 13 | manual | 1d | 2015-12-29 | 2015-12-29 |  | start no earlier than 2015-12-29 |  |
| 202 | 2.1.2.5.5.14 | IPT Meetings 14 | manual | 1d | 2016-01-05 | 2016-01-05 |  | start no earlier than 2016-01-05 |  |
| 203 | 2.1.2.5.5.15 | IPT Meetings 15 | manual | 1d | 2016-01-12 | 2016-01-12 |  | start no earlier than 2016-01-12 |  |
| 204 | 2.1.2.5.5.16 | IPT Meetings 16 | manual | 1d | 2016-01-19 | 2016-01-19 |  | start no earlier than 2016-01-19 |  |
| 205 | 2.1.2.5.5.17 | IPT Meetings 17 | manual | 1d | 2016-01-26 | 2016-01-26 |  | start no earlier than 2016-01-26 |  |
| 206 | 2.1.2.5.5.18 | IPT Meetings 18 | manual | 1d | 2016-02-02 | 2016-02-02 |  | start no earlier than 2016-02-02 |  |
| 207 | 2.1.2.5.5.19 | IPT Meetings 19 | manual | 1d | 2016-02-09 | 2016-02-09 |  | start no earlier than 2016-02-09 |  |
| 208 | 2.1.2.5.5.20 | IPT Meetings 20 | manual | 1d | 2016-02-16 | 2016-02-16 |  | start no earlier than 2016-02-16 |  |
| 209 | 2.1.2.5.5.21 | IPT Meetings 21 | manual | 1d | 2016-02-23 | 2016-02-23 |  | start no earlier than 2016-02-23 |  |
| 210 | 2.1.2.5.5.22 | IPT Meetings 22 | manual | 1d | 2016-03-01 | 2016-03-01 |  | start no earlier than 2016-03-01 |  |
| 211 | 2.1.2.5.5.23 | IPT Meetings 23 | manual | 1d | 2016-03-08 | 2016-03-08 |  | start no earlier than 2016-03-08 |  |
| 212 | 2.1.2.5.5.24 | IPT Meetings 24 | manual | 1d | 2016-03-15 | 2016-03-15 |  | start no earlier than 2016-03-15 |  |
| 213 | 2.1.2.5.5.25 | IPT Meetings 25 | manual | 1d | 2016-03-22 | 2016-03-22 |  | start no earlier than 2016-03-22 |  |

| ID | WBS | Task | Type | Duration | Start | Finish | Task ID |
| --- | --- | --- | --- | --- | --- | --- | --- |
| 214 | 2.1.2.5.6 | **Technical Environment (PRL-7)** |  | 20d | 2015-09-30 | 2015-10-27 |  |
| 215 | 2.1.2.5.6.1 | Draft Technical Requirements (PRL-6) | manual | 16d | 2015-09-30 | 2015-10-21 |  |
| 216 | 2.1.2.5.6.2 | Submit ESE Technical Requirements Submission Form | manual | 16d | 2015-09-30 | 2015-10-21 |  |
| 217 | 2.1.2.5.6.3 | Identify and Provide Access to the Development Account to Developers | manual | 16d | 2015-09-30 | 2015-10-21 |  |
| 218 | 2.1.2.5.6.4 | Requisition Development and Test Environment | manual | 20d | 2015-09-30 | 2015-10-27 |  |
| 219 | 2.1.2.5.7 | **Security Resources Assignments (PRL-4)** |  | 20d | 2015-09-30 | 2015-10-27 |  |
| 220 | 2.1.2.5.7.1 | Submit Request for Information Security Officer (ISO) Resource | manual | 14d | 2015-09-30 | 2015-10-19 |  |
| 221 | 2.1.2.5.7.2 | Submit Request for Compliance, Advisory, and Security Engineering (CASE) Resource | manual | 14d | 2015-09-30 | 2015-10-19 |  |
| 222 | 2.1.2.5.7.3 | Submit Request for Privacy Officer | manual | 14d | 2015-09-30 | 2015-10-19 |  |
| 223 | 2.1.2.5.7.4 | SMART Inventory Checklist and Form | manual | 14d | 2015-09-30 | 2015-10-19 |  |
| 224 | 2.1.2.5.7.5 | VA Information Protection Risk Assessment | manual | 20d | 2015-09-30 | 2015-10-27 |  |
| 225 | 2.1.2.5.8 | **Assessment and Authorization (AAA)** |  | 13d | 2015-09-30 | 2015-10-16 |  |
| 226 | 2.1.2.5.8.1 | Communication Outreach Process (AAA-1) | manual | 13d | 2015-09-30 | 2015-10-16 |  |
| 227 | 2.1.2.5.8.2 | Document Review Process (AAA-2) | manual | 13d | 2015-09-30 | 2015-10-16 |  |
| 228 | 2.1.2.5.8.3 | Security Control Assessment Process (AAA-3) | manual | 13d | 2015-09-30 | 2015-10-16 |  |
| 229 | 2.1.2.5.8.4 | Assessment Review and Authorization Determination Process (AAA-4) | manual | 13d | 2015-09-30 | 2015-10-16 |  |
| 230 | 2.1.2.5.8.5 | Initial Authorization and Determination Process (AAA-5) | manual | 13d | 2015-09-30 | 2015-10-16 |  |
| 231 | 2.1.2.6 | M: Project Kick off Complete | manual | 8d | 2015-09-30 | 2015-10-09 |  |
| 232 | 2.1.3 | **Project Management** |  | 1d | 2015-09-30 | 2015-09-30 |  |
| 233 | 2.1.3.1 | Staff Onboarding | manual | 13d | 2015-09-30 | 2015-10-16 |  |
| 234 | 2.1.3.2 | Obtain Imaged GFEs | manual | 29d | 2015-09-30 | 2015-11-09 |  |
| 235 | 2.1.3.3 | **D- Project Management Plan (PMP)** |  | 23d | 2015-09-30 | 2015-10-30 | 5.1.1.A |
| 236 | 2.1.3.3.1 | WBS and Project Schedule | manual | 8d | 2015-09-30 | 2015-10-09 |  |
| 237 | 2.1.3.3.2 | Risk Management Plan and Risk Log | manual | 23d | 2015-09-30 | 2015-10-30 |  |
| 238 | 2.1.3.3.3 | Training Plan | manual | 23d | 2015-09-30 | 2015-10-30 |  |
| 239 | 2.1.3.3.4 | Quality Assurance Plan | manual | 23d | 2015-09-30 | 2015-10-30 |  |
| 240 | 2.1.3.3.5 | Requirements Traceability Matrix (RTM) | manual | 23d | 2015-09-30 | 2015-10-30 |  |
| 241 | 2.1.3.3.6 | Continuity of Operations Plan (COOP) | manual | 23d | 2015-09-30 | 2015-10-30 |  |
| 242 | 2.1.3.3.7 | Disaster Recovery Plan | manual | 23d | 2015-09-30 | 2015-10-30 |  |
| 243 | 2.1.3.3.8 | Project Measurement Plan | manual | 23d | 2015-09-30 | 2015-10-30 |  |
| 244 | 2.1.3.3.9 | Resource Plan (Incorporate into PMP) | manual | 23d | 2015-09-30 | 2015-10-30 |  |
| 245 | 2.1.3.3.10 | Communication Plan (Incorporate into PMP) | manual | 23d | 2015-09-30 | 2015-10-30 |  |
| 246 | 2.1.3.3.11 | Configuration Management Plan (Incorporate into PMP) | manual | 23d | 2015-09-30 | 2015-10-30 |  |
| 247 | 2.1.3.3.12 | Test Plan (Incorporate into PMP) | manual | 23d | 2015-09-30 | 2015-10-30 |  |
| 248 | 2.1.3.3.13 | Software Configuration Mgt. Procedures | manual | 23d | 2015-09-30 | 2015-10-30 |  |
| 249 | 2.1.3.3.14 | Infrastructure Rough Order of Magnitude | manual | 23d | 2015-09-30 | 2015-10-30 |  |

| ID | WBS | Task | Type | Duration | Start | Finish | Task ID |
| --- | --- | --- | --- | --- | --- | --- | --- |
| 250 | 2.1.3.4 | **D: Updated Requirements Specification Document (RSD)** |  | 21d | 2015-09-30 | 2015-10-28 | 0002AA |
| 251 | 2.1.3.4.1 | Rational Requirements Composer entry | manual | 1d | 2015-10-28 | 2015-10-28 | 5.2.B |
| 252 | 2.1.3.4.2 | D: RSD Signed | manual | 5d | 2015-10-28 | 2015-11-03 | 5.2-2 |
| 253 | 2.1.3.4.3 | RTC entry of user stories and tasks | manual | 1d | 2015-10-30 | 2015-10-30 | 5-2-3 |
| 254 | 2.1.3.4.4 | Concept of Operations (CONOPS) Development | manual | 11d | 2015-09-30 | 2015-10-14 |  |
| 255 | 2.1.3.4.5 | Updated Requirements Traceability Matrix | manual | 10d | 2015-09-30 | 2015-10-13 |  |
| 256 | 2.1.3.4.6 | D: Updated System Design Document | manual | 23d | 2015-09-30 | 2015-10-30 | 0002AC |
| 257 | 2.1.3.5 | **Development** |  | 1d | 2015-09-30 | 2015-09-30 |  |
| 258 | 2.1.3.5.1 | OneVA Pilot Code Installation in Development Environment | manual | 18d | 2015-09-30 | 2015-10-23 |  |
| 259 | 2.1.3.5.2 | Implementation Specific Enhancements Development | manual | 18d | 2015-09-30 | 2015-10-23 |  |
| 260 | 2.1.3.6 | D: Open Source Code In Flight Submission to OSEHRA | manual | 23d | 2015-09-30 | 2015-10-30 | 0001AJ |
| 261 | 2.1.4 | **D: Pre-Development Package (RSD/RRC/SDD Updated)** |  | 30d | 2015-09-30 | 2015-11-10 |  |
| 262 | 2.1.4.1 | **Requirements Elaboration (Pre-Development Package)** |  | 1d | 2015-09-30 | 2015-09-30 |  |
| 263 | 2.1.4.1.1 | Requirements Elaboration (Pre-Development Package) | manual | 46d | 2015-09-30 | 2015-12-02 |  |
| 264 | 2.1.4.1.2 | Updated RSD | manual | 23d | 2015-09-30 | 2015-10-30 |  |
| 265 | 2.1.4.1.3 | Requirements Traceability Matrix | manual | 29d | 2015-09-30 | 2015-11-09 |  |
| 266 | 2.1.4.2 | **Milestone 1 Review and Artifacts Preparation** |  | 1d | 2015-09-30 | 2015-09-30 |  |
| 267 | 2.1.4.2.1 | Outcome Statement | manual | 50d | 2015-09-30 | 2015-12-08 |  |
| 268 | 2.1.4.2.2 | Risk Log | manual | 50d | 2015-09-30 | 2015-12-08 |  |
| 269 | 2.1.4.2.3 | Requirements Specification Document | manual | 50d | 2015-09-30 | 2015-12-08 |  |
| 270 | 2.1.4.2.4 | System Design Document | manual | 50d | 2015-09-30 | 2015-12-08 |  |
| 271 | 2.1.4.2.5 | Acquisition Strategy | manual | 50d | 2015-09-30 | 2015-12-08 |  |
| 272 | 2.1.4.2.6 | Transition Plan | manual | 50d | 2015-09-30 | 2015-12-08 |  |
| 273 | 2.1.4.2.7 | Acceptance Criteria Plan | manual | 50d | 2015-09-30 | 2015-12-08 |  |

| ID | WBS | Task | Type | Duration | Start | Finish | Predecessors | Total slack | Constraint | Task ID |
| --- | --- | --- | --- | --- | --- | --- | --- | --- | --- | --- |
| 274 | 2.1.4.2.8 | **Milestone 1 (MS1) Review** |  | 1d | 2015-09-30 | 2015-09-30 |  |  |  |  |
| 275 | 2.1.4.2.8.1 | **Milestone 1 (MS1) Review** |  | 50d | 2015-09-30 | 2015-12-08 |  |  |  |  |
| 276 | 2.1.4.2.8.1.1 | Schedule Milestone 1 Review | manual | 1d | 2015-10-07 | 2015-10-07 |  |  |  |  |
| 277 | 2.1.4.2.8.1.2 | Prepare MS1 Meeting | manual | 50d | 2015-09-30 | 2015-12-08 |  |  |  |  |
| 278 | 2.1.4.2.8.1.3 | Conduct MS1 Internal Meeting | manual | 50d | 2015-09-30 | 2015-12-08 |  |  |  |  |
| 279 | 2.1.4.2.8.1.4 | Conduct MS1 Meeting (Pre-Brief) | manual | 50d | 2015-09-30 | 2015-12-08 |  |  |  |  |
| 280 | 2.1.4.2.8.1.5 | Conduct Milestone 1 Review and Deliver Brief | manual | 50d | 2015-09-30 | 2015-12-08 |  |  |  |  |
| 281 | 2.1.4.2.8.2 | Schedule Milestone 1 Review | manual | 50d | 2015-09-30 | 2015-12-08 |  |  |  |  |
| 282 | 2.1.4.2.8.3 | Prepare MS1 Meeting | manual | 50d | 2015-09-30 | 2015-12-08 |  |  |  |  |
| 283 | 2.1.4.2.8.4 | Conduct MS1 Internal Meeting | manual | 50d | 2015-09-30 | 2015-12-08 |  |  |  |  |
| 284 | 2.1.4.2.8.5 | Conduct MS1 Meeting (Pre-Brief) | manual | 50d | 2015-09-30 | 2015-12-08 |  |  |  |  |
| 285 | 2.1.4.2.8.6 | Conduct Milestone 1 Review and Deliver Brief | manual | 50d | 2015-09-30 | 2015-12-08 |  |  |  |  |
| 286 | 2.1.4.3 | **Software Quality Assurance (SQA) Request** |  | 1d | 2015-09-30 | 2015-09-30 |  |  |  |  |
| 287 | 2.1.4.3.1 | Initiate SQA Request (PRP-3.2) | manual | 6d | 2015-09-30 | 2015-10-07 |  |  |  |  |
| 288 | 2.1.4.3.2 | Submit Request for SQA Analyst | manual | 6d | 2015-09-30 | 2015-10-07 |  |  |  |  |
| 289 | 2.1.4.4 | **VistA Modernization Technical Tasks** |  | 131d | 2015-09-30 | 2016-03-30 |  |  |  |  |
| 290 | 2.1.4.4.1 | Release Planning Meeting | manual | 1d | 2015-10-12 | 2015-10-12 |  |  |  |  |
| 291 | 2.1.4.4.2 | Sprint 1 - Change the Locking Scenario | manual | 30d | 2015-09-30 | 2015-11-10 |  |  |  |  |
| 292 | 2.1.4.4.3 | Sprint 2 - Change the VistA Scenario for Cocntroled Substances to Display Error Message | manual | 14d | 2015-11-02 | 2015-11-19 | 291 |  |  |  |
| 293 | 2.1.4.4.4 | Sprint 3 - Update the VistA Medication Profile View to Include CDS Information and VA Product Data | manual | 31d | 2015-11-09 | 2015-12-21 |  |  |  |  |
| 294 | 2.1.4.4.5 | Sprint 4 - Harden VistA Package, KIDS Package | manual | 14d | 2015-12-14 | 2015-12-31 |  |  |  |  |
| 295 | 2.1.4.4.6 | **Approved Source Code** |  | 66d | 2015-12-30 | 2016-03-30 |  | 0d |  | 0003AA |
| 296 | 2.1.4.4.6.1 | Approved Source Code 1 | manual | 1d | 2015-12-30 | 2015-12-30 |  |  | start no earlier than 2015-12-30 |  |
| 297 | 2.1.4.4.6.2 | Approved Source Code 2 | manual | 1d | 2016-01-30 | 2016-01-30 |  |  | start no earlier than 2016-01-30 |  |
| 298 | 2.1.4.4.6.3 | Approved Source Code 3 | manual | 1d | 2016-02-29 | 2016-02-29 |  |  | start no earlier than 2016-02-29 |  |
| 299 | 2.1.4.4.6.4 | Approved Source Code 4 | manual | 1d | 2016-03-30 | 2016-03-30 |  |  | start no earlier than 2016-03-30 |  |
| 300 | 2.1.4.4.7 | Sprint 5 - Testing | manual | 42d | 2016-01-04 | 2016-03-01 |  |  |  |  |
| 301 | 2.1.4.4.8 | Sprint 6 - Finalize Package, Perform Reviews and Introduction to VistA Intake | manual | 30d | 2016-02-15 | 2016-03-25 |  |  |  |  |

| ID | WBS | Task | Type | Duration | Start | Finish | Total slack | Constraint | Task ID |
| --- | --- | --- | --- | --- | --- | --- | --- | --- | --- |
| 302 | 2.1.4.5 | **EMI / RX Manager Manager Technical Tasks** |  | 131d | 2015-09-30 | 2016-03-30 |  |  |  |
| 303 | 2.1.4.5.1 | Release Planning Meeting | manual | 1d | 2015-10-12 | 2015-10-12 |  |  |  |
| 304 | 2.1.4.5.2 | Sprint 1 - Change the Locking Scenario | manual | 30d | 2015-09-30 | 2015-11-10 |  |  |  |
| 305 | 2.1.4.5.3 | Sprint 2 - Change the VistA Scenario for Cocntroled Substances to Display Error Message | manual | 14d | 2015-11-02 | 2015-11-19 |  |  |  |
| 306 | 2.1.4.5.4 | Sprint 3 - Update the VistA Medication Profile View to Include CDS Information and VA Product Data | manual | 31d | 2015-11-09 | 2015-12-21 |  |  |  |
| 307 | 2.1.4.5.5 | Sprint 4 - Harden VistA Package, KIDS Package | manual | 14d | 2015-12-14 | 2015-12-31 |  |  |  |
| 308 | 2.1.4.5.6 | **Approved Source Code** |  | 66d | 2015-12-30 | 2016-03-30 | 0d |  | 0003AA |
| 309 | 2.1.4.5.6.1 | Approved Source Code 1 | manual | 1d | 2015-12-30 | 2015-12-30 |  | start no earlier than 2015-12-30 |  |
| 310 | 2.1.4.5.6.2 | Approved Source Code 2 | manual | 1d | 2016-01-30 | 2016-01-30 |  | start no earlier than 2016-01-30 |  |
| 311 | 2.1.4.5.6.3 | Approved Source Code 3 | manual | 1d | 2016-02-29 | 2016-02-29 |  | start no earlier than 2016-02-29 |  |
| 312 | 2.1.4.5.6.4 | Approved Source Code 4 | manual | 1d | 2016-03-30 | 2016-03-30 |  | start no earlier than 2016-03-30 |  |
| 313 | 2.1.4.5.7 | Sprint 5 - Testing | manual | 42d | 2016-01-04 | 2016-03-01 |  |  |  |
| 314 | 2.1.4.5.8 | Sprint 6 - Finalize Package, Perform Reviews and Introduction to VistA Intake | manual | 30d | 2016-02-15 | 2016-03-25 |  |  |  |
| 315 | 2.1.4.6 | **D: Prepare associated artifacts for ETA Compliance Checklist** |  | 30d | 2015-09-30 | 2015-11-10 |  |  | 5.2-5 |
| 316 | 2.1.4.6.1 | Contingency Plan | manual | 23d | 2015-09-30 | 2015-10-30 |  |  | 5.2-5 |
| 317 | 2.1.4.6.2 | Disaster Recovery Plan | manual | 23d | 2015-09-30 | 2015-10-30 |  |  | 5.2-5 |
| 318 | 2.1.4.6.3 | System Security Plan | manual | 30d | 2015-09-30 | 2015-11-10 |  |  | 5.2-5 |
| 319 | 2.1.4.6.4 | System Engineering & Design Review (SEDR) | manual | 30d | 2015-09-30 | 2015-11-10 |  |  |  |
| 320 | 2.1.5 | **ESE Testing Package** |  | 1d | 2015-09-30 | 2015-09-30 |  |  |  |
| 321 | 2.1.5.1 | ESE Testing Intake Assessment Form | manual | 21d | 2015-09-30 | 2015-10-28 |  |  |  |
| 322 | 2.1.5.2 | **Critical Analysis & Risk Assessment (CARA) Analysis** |  | 1d | 2015-09-30 | 2015-09-30 |  |  |  |
| 323 | 2.1.5.2.1 | ESE Risk Analysis & Testing Scope Report (RATSR) | manual | 73d | 2015-09-30 | 2016-01-08 |  |  |  |
| 324 | 2.1.5.3 | M: Risk Analysis & Testing Scope Report (RATSR) | manual | 1d | 2016-01-11 | 2016-01-11 |  |  |  |
| 325 | 2.1.5.4 | D: Risk Issue Log | manual | 30d | 2015-09-30 | 2015-11-10 |  |  | 5.1.1.D |
| 326 | 2.1.5.5 | Testing Workload Forecast | manual | 30d | 2015-09-30 | 2015-11-10 |  |  |  |
| 327 | 2.1.5.6 | Preliminary Release Management & ESE Testing Schedule | manual | 35d | 2015-09-30 | 2015-11-17 |  |  |  |

| ID | WBS | Task | Type | Duration | Start | Finish | Total slack | Constraint | Task ID |
| --- | --- | --- | --- | --- | --- | --- | --- | --- | --- |
| 328 | 2.2 | **Test Preparation Package (TST)** |  | 1d | 2015-09-30 | 2015-09-30 |  |  |  |
| 329 | 2.2.1 | **Test Risks** |  | 1d | 2015-09-30 | 2015-09-30 |  |  |  |
| 330 | 2.2.1.1 | Identify Test Risks and Develop Mitigation Strategy | manual | 45d | 2015-09-30 | 2015-12-01 |  |  |  |
| 331 | 2.2.1.2 | Identify Requirements for Applicable Test Environment | manual | 45d | 2015-09-30 | 2015-12-01 |  |  |  |
| 332 | 2.2.2 | **Master Test Plan** |  | 66d | 2015-09-30 | 2015-12-30 |  |  |  |
| 333 | 2.2.2.1 | Create Master Test Plan | manual | 66d | 2015-09-30 | 2015-12-30 |  |  |  |
| 334 | 2.2.2.2 | Peer Review of Master Test Plan | manual | 1d | 2015-12-30 | 2015-12-30 |  |  |  |
| 335 | 2.2.2.3 | Master Test Plan Checklist (Include Review Findings Summary) | manual | 1d | 2015-12-30 | 2015-12-30 |  |  |  |
| 336 | 2.2.2.4 | Record of Notification | manual | 1d | 2016-01-04 | 2016-01-04 |  |  |  |
| 337 | 2.2.2.5 | **Formal Review of Master Test Plan** |  | 1d | 2015-09-30 | 2015-09-30 |  |  |  |
| 338 | 2.2.2.5.1 | Artifact Review Agenda and Minutes | manual | 1d | 2016-01-11 | 2016-01-11 |  |  |  |
| 339 | 2.2.2.5.2 | Master Test Plan Checklist (Include Review Findings Summary) | manual | 1d | 2016-01-11 | 2016-01-11 |  |  |  |
| 340 | 2.2.3 | Development Test Environments | manual | 21d | 2015-09-30 | 2015-10-28 |  |  |  |
| 341 | 2.2.4 | **Test Cases and Test Scripts** |  | 90d | 2015-09-30 | 2016-02-02 |  |  |  |
| 342 | 2.2.4.1 | Create Test Cases | manual | 70d | 2015-09-30 | 2016-01-05 |  |  |  |
| 343 | 2.2.4.2 | Conduct Peer Review of Test Cases and Test Scripts | manual | 5d | 2016-01-05 | 2016-01-11 |  |  |  |
| 344 | 2.2.4.3 | Record of Notification from Peer Review | manual | 1d | 2016-01-11 | 2016-01-11 |  |  |  |
| 345 | 2.2.4.4 | Update Test Cases and Test Scripts Checklist (Include Review Findings Summary) | manual | 1d | 2016-01-12 | 2016-01-12 |  |  |  |
| 346 | 2.2.4.5 | **Formal Review of Test Cases and Test Scripts** |  | 80d | 2015-09-30 | 2016-01-19 |  |  |  |
| 347 | 2.2.4.5.1 | Meeting Agenda and Minutes | manual | 1d | 2016-01-19 | 2016-01-19 |  |  |  |
| 348 | 2.2.4.5.2 | Test Case/Scripts Checklist (Include Findings Summary) | manual | 1d | 2016-01-19 | 2016-01-19 |  |  |  |
| 349 | 2.2.4.5.3 | Updated Test Cases/Scripts | manual | 1d | 2016-01-20 | 2016-01-20 |  |  |  |
| 350 | 2.2.4.5.4 | **D: Peer and User Reviewed and Approved Test Cases and Test Scripts** |  | 66d | 2015-12-30 | 2016-03-30 | 0d |  | 0004AB |
| 351 | 2.2.4.5.4.1 | D: Peer and User Reviewed and Approved Test Cases and Test Scripts 1 | manual | 1d | 2015-12-30 | 2015-12-30 |  | start no earlier than 2015-12-30 |  |
| 352 | 2.2.4.5.4.2 | D: Peer and User Reviewed and Approved Test Cases and Test Scripts 2 | manual | 1d | 2016-01-30 | 2016-01-30 |  | start no earlier than 2016-01-30 |  |
| 353 | 2.2.4.5.4.3 | D: Peer and User Reviewed and Approved Test Cases and Test Scripts 3 | manual | 1d | 2016-02-29 | 2016-02-29 |  | start no earlier than 2016-02-29 |  |
| 354 | 2.2.4.5.4.4 | D: Peer and User Reviewed and Approved Test Cases and Test Scripts 4 | manual | 1d | 2016-03-30 | 2016-03-30 |  | start no earlier than 2016-03-30 |  |
| 355 | 2.2.4.5.5 | D: Testing Related tasks Entered into RTC: | manual | 66d | 2015-12-30 | 2016-03-30 |  |  |  |
| 356 | 2.2.5 | ESE Testing Request (Testing Intake Form) | manual | 1d | 2015-12-30 | 2015-12-30 |  |  |  |

| ID | WBS | Task | Type | Duration | Start | Finish | Total slack | Constraint | Task ID |
| --- | --- | --- | --- | --- | --- | --- | --- | --- | --- |
| 357 | 2.2.6 | **D: Signed OIC Site Memorandum of Undersanding** |  | 66d | 2015-12-30 | 2016-03-30 | 0d |  | 0004AD |
| 358 | 2.2.6.1 | D: Signed OIC Site Memorandum of Undersanding 1 | manual | 1d | 2015-12-30 | 2015-12-30 |  | start no earlier than 2015-12-30 |  |
| 359 | 2.2.6.2 | D: Signed OIC Site Memorandum of Undersanding 2 | manual | 1d | 2016-01-30 | 2016-01-30 |  | start no earlier than 2016-01-30 |  |
| 360 | 2.2.6.3 | D: Signed OIC Site Memorandum of Undersanding 3 | manual | 1d | 2016-02-29 | 2016-02-29 |  | start no earlier than 2016-02-29 |  |
| 361 | 2.2.6.4 | D: Signed OIC Site Memorandum of Undersanding 4 | manual | 1d | 2016-03-30 | 2016-03-30 |  | start no earlier than 2016-03-30 |  |
| 362 | 2.2.7 | Open Source Preparation/ Update Open Source Community | manual | 1d | 2015-09-30 | 2015-09-30 |  |  |  |
| 363 | 2.2.8 | **Test Case and Test Script Traceability** |  | 131d | 2015-09-30 | 2016-03-30 |  |  |  |
| 364 | 2.2.8.1 | Link Test Cases to Requirements Traceability Matrix (RTM) | manual | 45d | 2015-09-30 | 2015-12-01 |  |  |  |
| 365 | 2.2.8.2 | Link Test Scripts to Requirements Traceability Matrix (RTM) | manual | 45d | 2015-09-30 | 2015-12-01 |  |  |  |
| 366 | 2.2.9 | D: Inititial RTM | manual | 45d | 2015-09-30 | 2015-12-01 |  |  |  |
| 367 | 2.2.10 | **D: Update Master Test Plan - Signatures** |  | 66d | 2015-12-30 | 2016-03-30 |  |  | 0004AA |
| 368 | 2.2.10.1 | D: Update Master Test Plan - Signatures 1 | manual | 1d | 2015-12-30 | 2015-12-30 |  | start no earlier than 2015-12-30 |  |
| 369 | 2.2.10.2 | D: Update Master Test Plan - Signatures 2 | manual | 1d | 2016-01-30 | 2016-01-30 |  | start no earlier than 2016-01-30 |  |
| 370 | 2.2.10.3 | D: Update Master Test Plan - Signatures 3 | manual | 1d | 2016-02-29 | 2016-02-29 |  | start no earlier than 2016-02-29 |  |
| 371 | 2.2.10.4 | D: Update Master Test Plan - Signatures 4 | manual | 1d | 2016-03-30 | 2016-03-30 |  | start no earlier than 2016-03-30 |  |
| 372 | 2.2.11 | M: Link Test Scripts to Requirements Traceability Matrix | manual | 1d | 2015-12-28 | 2015-12-28 |  |  |  |
| 373 | 2.2.12 | **D: Updated RTM** |  | 43d | 2016-01-30 | 2016-03-30 | 0d |  | 0004AM |
| 374 | 2.2.12.1 | D: Updated RTM 1 | manual | 1d | 2016-01-30 | 2016-01-30 |  | start no earlier than 2016-01-30 |  |
| 375 | 2.2.12.2 | D: Updated RTM 2 | manual | 1d | 2016-02-29 | 2016-02-29 |  | start no earlier than 2016-02-29 |  |
| 376 | 2.2.12.3 | D: Updated RTM 3 | manual | 1d | 2016-03-30 | 2016-03-30 |  | start no earlier than 2016-03-30 |  |
| 377 | 2.2.13 | D: ESE Testing Intake Form | manual | 1d | 2016-02-01 | 2016-02-01 |  |  |  |
| 378 | 2.2.14 | **D: ESE Risk Analysis and Testing Scope Report (RATSR)** |  | 66d | 2015-12-30 | 2016-03-30 | 0d |  | 0004AE |
| 379 | 2.2.14.1 | D: ESE Risk Analysis and Testing Scope Report (RATSR) 1 | manual | 1d | 2015-12-30 | 2015-12-30 |  | start no earlier than 2015-12-30 |  |
| 380 | 2.2.14.2 | D: ESE Risk Analysis and Testing Scope Report (RATSR) 2 | manual | 1d | 2016-01-30 | 2016-01-30 |  | start no earlier than 2016-01-30 |  |
| 381 | 2.2.14.3 | D: ESE Risk Analysis and Testing Scope Report (RATSR) 3 | manual | 1d | 2016-02-29 | 2016-02-29 |  | start no earlier than 2016-02-29 |  |
| 382 | 2.2.14.4 | D: ESE Risk Analysis and Testing Scope Report (RATSR) 4 | manual | 1d | 2016-03-30 | 2016-03-30 |  | start no earlier than 2016-03-30 |  |

| ID | WBS | Task | Type | Duration | Start | Finish | Total slack | Constraint | Task ID |
| --- | --- | --- | --- | --- | --- | --- | --- | --- | --- |
| 383 | 2.3 | **Release Planning Package** |  | 75d | 2015-09-30 | 2016-01-12 |  |  |  |
| 384 | 2.3.1 | Conduct Release Planning | manual | 60d | 2015-09-30 | 2015-12-22 |  |  |  |
| 385 | 2.3.2 | **Release Requirements** |  | 60d | 2015-09-30 | 2015-12-22 |  |  |  |
| 386 | 2.3.2.1 | D: Create Production Operations Manual | manual | 90d | 2015-09-30 | 2016-02-02 |  |  | 5-2-5 |
| 387 | 2.3.2.2 | Service Level Agreements (e.g., MOUs) | manual | 75d | 2015-09-30 | 2016-01-12 |  |  |  |
| 388 | 2.3.2.3 | Create Release Management Plan | manual | 60d | 2015-09-30 | 2015-12-22 |  |  |  |
| 389 | 2.3.2.4 | D: Create Operational Acceptance Plan | manual | 71d | 2015-09-30 | 2016-01-06 |  |  | 5-2-5 |
| 390 | 2.3.3 | Release First Contact Form | manual | 1d | 2016-01-19 | 2016-01-19 |  |  |  |
| 391 | 2.3.4 | National Release Checklist | manual | 1d | 2016-01-19 | 2016-01-19 |  |  |  |
| 392 | 2.3.5 | Release Management Plan | manual | 5d | 2016-01-20 | 2016-01-26 |  |  |  |
| 393 | 2.3.6 | **Release Management** |  | 126d | 2015-09-30 | 2016-03-23 |  |  |  |
| 394 | 2.3.6.1 | Deliver Update M1 and M2 Documents | manual | 22d | 2015-09-30 | 2015-10-29 |  |  |  |
| 395 | 2.3.6.2 | Provide Release Documentation to SQA Team | manual | 17d | 2015-10-27 | 2015-11-18 |  |  |  |
| 396 | 2.3.6.3 | Provide 508 Compliance Updates | manual | 75d | 2015-09-30 | 2016-01-12 |  |  |  |
| 397 | 2.3.6.4 | **SQA Testing** |  | 126d | 2015-09-30 | 2016-03-23 |  |  |  |
| 398 | 2.3.6.4.1 | **D: Primary Developer Checklist Developed (Unit Functional Testing)** |  | 43d | 2016-01-30 | 2016-03-30 | 0d |  | 0004AF |
| 399 | 2.3.6.4.1.1 | D: Primary Developer Checklist Developed (Unit Functional Testing) 1 | manual | 1d | 2016-01-30 | 2016-01-30 |  | start no earlier than 2016-01-30 |  |
| 400 | 2.3.6.4.1.2 | D: Primary Developer Checklist Developed (Unit Functional Testing) 2 | manual | 1d | 2016-02-29 | 2016-02-29 |  | start no earlier than 2016-02-29 |  |
| 401 | 2.3.6.4.1.3 | D: Primary Developer Checklist Developed (Unit Functional Testing) 3 | manual | 1d | 2016-03-30 | 2016-03-30 |  | start no earlier than 2016-03-30 |  |
| 402 | 2.3.6.4.2 | **D: Secondary Developer Checklists** |  | 43d | 2016-01-30 | 2016-03-30 | 0d |  | 0004AG |
| 403 | 2.3.6.4.2.1 | D: Secondary Developer Checklists 1 | manual | 1d | 2016-01-30 | 2016-01-30 |  | start no earlier than 2016-01-30 |  |
| 404 | 2.3.6.4.2.2 | D: Secondary Developer Checklists 2 | manual | 1d | 2016-02-29 | 2016-02-29 |  | start no earlier than 2016-02-29 |  |
| 405 | 2.3.6.4.2.3 | D: Secondary Developer Checklists 3 | manual | 1d | 2016-03-30 | 2016-03-30 |  | start no earlier than 2016-03-30 |  |
| 406 | 2.3.6.4.3 | **D: Updated and approved Test Cases and Test Scripts and Results** |  | 43d | 2016-01-30 | 2016-03-30 | 0d |  | 0004AH |
| 407 | 2.3.6.4.3.1 | D: Updated and approved Test Cases and Test Scripts and Results 1 | manual | 1d | 2016-01-30 | 2016-01-30 |  | start no earlier than 2016-01-30 |  |
| 408 | 2.3.6.4.3.2 | D: Updated and approved Test Cases and Test Scripts and Results 2 | manual | 1d | 2016-02-29 | 2016-02-29 |  | start no earlier than 2016-02-29 |  |
| 409 | 2.3.6.4.3.3 | D: Updated and approved Test Cases and Test Scripts and Results 3 | manual | 1d | 2016-03-30 | 2016-03-30 |  | start no earlier than 2016-03-30 |  |

| ID | WBS | Task | Type | Duration | Start | Finish | Total slack | Constraint | Task ID |
| --- | --- | --- | --- | --- | --- | --- | --- | --- | --- |
| 410 | 2.3.6.4.4 | **D: HP Fortify Static Code Analyzer Scan Results** |  | 43d | 2016-01-30 | 2016-03-30 | 0d |  | 0004AJ |
| 411 | 2.3.6.4.4.1 | D: HP Fortify Static Code Analyzer Scan Results 1 | manual | 1d | 2016-01-30 | 2016-01-30 |  | start no earlier than 2016-01-30 |  |
| 412 | 2.3.6.4.4.2 | D: HP Fortify Static Code Analyzer Scan Results 2 | manual | 1d | 2016-02-29 | 2016-02-29 |  | start no earlier than 2016-02-29 |  |
| 413 | 2.3.6.4.4.3 | D: HP Fortify Static Code Analyzer Scan Results 3 | manual | 1d | 2016-03-30 | 2016-03-30 |  | start no earlier than 2016-03-30 |  |
| 414 | 2.3.6.4.5 | Test Readiness Review | manual | 1d | 2016-03-15 | 2016-03-15 |  |  |  |
| 415 | 2.3.6.4.6 | **D: Product Build for SQA Testing** |  | 43d | 2016-01-30 | 2016-03-30 | 0d |  | 0004AK |
| 416 | 2.3.6.4.6.1 | D: Product Build for SQA Testing 1 | manual | 1d | 2016-01-30 | 2016-01-30 |  | start no earlier than 2016-01-30 |  |
| 417 | 2.3.6.4.6.2 | D: Product Build for SQA Testing 2 | manual | 1d | 2016-02-29 | 2016-02-29 |  | start no earlier than 2016-02-29 |  |
| 418 | 2.3.6.4.6.3 | D: Product Build for SQA Testing 3 | manual | 1d | 2016-03-30 | 2016-03-30 |  | start no earlier than 2016-03-30 |  |
| 419 | 2.3.6.4.7 | **D: Updated Test Cases and Test Scripts and Results** |  | 43d | 2016-01-30 | 2016-03-30 | 0d |  | 0004AK |
| 420 | 2.3.6.4.7.1 | D: Updated Test Cases and Test Scripts and Results 1 | manual | 1d | 2016-01-30 | 2016-01-30 |  | start no earlier than 2016-01-30 |  |
| 421 | 2.3.6.4.7.2 | D: Updated Test Cases and Test Scripts and Results 2 | manual | 1d | 2016-02-29 | 2016-02-29 |  | start no earlier than 2016-02-29 |  |
| 422 | 2.3.6.4.7.3 | D: Updated Test Cases and Test Scripts and Results 3 | manual | 1d | 2016-03-30 | 2016-03-30 |  | start no earlier than 2016-03-30 |  |
| 423 | 2.3.6.4.8 | SQA Testing | manual | 10d | 2016-01-30 | 2016-02-11 |  |  |  |
| 424 | 2.3.6.4.9 | **D: UFT Test Cases and Test Scripts with Results** |  | 43d | 2016-01-30 | 2016-03-30 | 0d |  |  |
| 425 | 2.3.6.4.9.1 | D: UFT Test Cases and Test Scripts with Results 1 | manual | 1d | 2016-01-30 | 2016-01-30 |  | start no earlier than 2016-01-30 |  |
| 426 | 2.3.6.4.9.2 | D: UFT Test Cases and Test Scripts with Results 2 | manual | 1d | 2016-02-29 | 2016-02-29 |  | start no earlier than 2016-02-29 |  |
| 427 | 2.3.6.4.9.3 | D: UFT Test Cases and Test Scripts with Results 3 | manual | 1d | 2016-03-30 | 2016-03-30 |  | start no earlier than 2016-03-30 |  |
| 428 | 2.3.6.4.10 | **User Acceptance Testing** |  | 47d | 2016-01-30 | 2016-04-05 | 0d |  |  |
| 429 | 2.3.6.4.10.1 | User Acceptance Testing 1 | manual | 5d | 2016-01-30 | 2016-02-04 |  | start no earlier than 2016-01-30 |  |
| 430 | 2.3.6.4.10.2 | User Acceptance Testing 2 | manual | 5d | 2016-02-29 | 2016-03-04 |  | start no earlier than 2016-02-29 |  |
| 431 | 2.3.6.4.10.3 | User Acceptance Testing 3 | manual | 5d | 2016-03-30 | 2016-04-05 |  | start no earlier than 2016-03-30 |  |
| 432 | 2.3.6.4.11 | **D: Product Build Test Evaluations** |  | 43d | 2016-01-30 | 2016-03-30 | 0d |  | 0004AN |
| 433 | 2.3.6.4.11.1 | D: Product Build Test Evaluations 1 | manual | 1d | 2016-01-30 | 2016-01-30 |  | start no earlier than 2016-01-30 |  |
| 434 | 2.3.6.4.11.2 | D: Product Build Test Evaluations 2 | manual | 1d | 2016-02-29 | 2016-02-29 |  | start no earlier than 2016-02-29 |  |
| 435 | 2.3.6.4.11.3 | D: Product Build Test Evaluations 3 | manual | 1d | 2016-03-30 | 2016-03-30 |  | start no earlier than 2016-03-30 |  |

| ID | WBS | Task | Type | Duration | Start | Finish | Total slack | Constraint | Task ID |
| --- | --- | --- | --- | --- | --- | --- | --- | --- | --- |
| 436 | 2.3.6.4.12 | **D: Product Build VistA SQA Checklists** |  | 43d | 2016-01-30 | 2016-03-30 | 0d |  | 0004AP |
| 437 | 2.3.6.4.12.1 | D: Product Build VistA SQA Checklists 1 | manual | 1d | 2016-01-30 | 2016-01-30 |  | start no earlier than 2016-01-30 |  |
| 438 | 2.3.6.4.12.2 | D: Product Build VistA SQA Checklists 2 | manual | 1d | 2016-02-29 | 2016-02-29 |  | start no earlier than 2016-02-29 |  |
| 439 | 2.3.6.4.12.3 | D: Product Build VistA SQA Checklists 3 | manual | 1d | 2016-03-30 | 2016-03-30 |  | start no earlier than 2016-03-30 |  |
| 440 | 2.3.6.4.13 | Deliver Vulnerability Report | manual | 5d | 2016-01-30 | 2016-02-04 |  |  |  |
| 441 | 2.3.6.4.14 | Bug Fixes | manual | 2d | 2016-02-04 | 2016-02-05 |  |  |  |
| 442 | 2.3.6.4.15 | SQA Regression Testing | manual | 2d | 2016-03-07 | 2016-03-08 |  |  |  |
| 443 | 2.3.6.4.16 | Testing Complete | milestone, manual | 0d | 2016-03-15 | 2016-03-15 |  |  |  |
| 444 | 2.3.6.4.17 | D: Final Section 508 Compliance Test Results | manual | 5d | 2016-03-15 | 2016-03-21 |  |  | 0011 |
| 445 | 2.3.6.5 | **Approvals** |  | 120d | 2015-09-30 | 2016-03-15 |  |  |  |
| 446 | 2.3.6.5.1 | **Updated and Approved ProPath Required Documentation** |  | 66d | 2015-12-30 | 2016-03-30 | 0d |  | 0003AB |
| 447 | 2.3.6.5.1.1 | Updated and Approved ProPath Required Documentation 1 | manual | 1d | 2015-12-30 | 2015-12-30 |  | start no earlier than 2015-12-30 |  |
| 448 | 2.3.6.5.1.2 | Updated and Approved ProPath Required Documentation 2 | manual | 1d | 2016-01-30 | 2016-01-30 |  | start no earlier than 2016-01-30 |  |
| 449 | 2.3.6.5.1.3 | Updated and Approved ProPath Required Documentation 3 | manual | 1d | 2016-02-29 | 2016-02-29 |  | start no earlier than 2016-02-29 |  |
| 450 | 2.3.6.5.1.4 | Updated and Approved ProPath Required Documentation 4 | manual | 1d | 2016-03-30 | 2016-03-30 |  | start no earlier than 2016-03-30 |  |
| 451 | 2.3.6.5.2 | **Documents Reviewed by IPT** |  | 66d | 2015-12-30 | 2016-03-30 | 0d |  |  |
| 452 | 2.3.6.5.2.1 | Documents Reviewed by IPT 1 | manual | 1d | 2015-12-30 | 2015-12-30 |  | start no earlier than 2015-12-30 |  |
| 453 | 2.3.6.5.2.2 | Documents Reviewed by IPT 2 | manual | 1d | 2016-01-30 | 2016-01-30 |  | start no earlier than 2016-01-30 |  |
| 454 | 2.3.6.5.2.3 | Documents Reviewed by IPT 3 | manual | 1d | 2016-02-29 | 2016-02-29 |  | start no earlier than 2016-02-29 |  |
| 455 | 2.3.6.5.2.4 | Documents Reviewed by IPT 4 | manual | 1d | 2016-03-30 | 2016-03-30 |  | start no earlier than 2016-03-30 |  |
| 456 | 2.3.6.5.3 | **Required an Aproved ProPath IOC Documentation** |  | 66d | 2015-12-30 | 2016-03-30 | 0d |  | 0003AC |
| 457 | 2.3.6.5.3.1 | Required an Aproved ProPath IOC Documentation 1 | manual | 1d | 2015-12-30 | 2015-12-30 |  | start no earlier than 2015-12-30 |  |
| 458 | 2.3.6.5.3.2 | Required an Aproved ProPath IOC Documentation 2 | manual | 1d | 2016-01-30 | 2016-01-30 |  | start no earlier than 2016-01-30 |  |
| 459 | 2.3.6.5.3.3 | Required an Aproved ProPath IOC Documentation 3 | manual | 1d | 2016-02-29 | 2016-02-29 |  | start no earlier than 2016-02-29 |  |
| 460 | 2.3.6.5.3.4 | Required an Aproved ProPath IOC Documentation 4 | manual | 1d | 2016-03-30 | 2016-03-30 |  | start no earlier than 2016-03-30 |  |

| ID | WBS | Task | Type | Duration | Start | Finish | Total slack | Constraint | Task ID |
| --- | --- | --- | --- | --- | --- | --- | --- | --- | --- |
| 461 | 2.3.6.5.4 | **D: Signed Cusomer Acceptance Form** |  | 43d | 2016-01-30 | 2016-03-30 | 0d |  | 0004AR |
| 462 | 2.3.6.5.4.1 | D: Signed Cusomer Acceptance Form 1 | manual | 1d | 2016-01-30 | 2016-01-30 |  | start no earlier than 2016-01-30 |  |
| 463 | 2.3.6.5.4.2 | D: Signed Cusomer Acceptance Form 2 | manual | 1d | 2016-02-29 | 2016-02-29 |  | start no earlier than 2016-02-29 |  |
| 464 | 2.3.6.5.4.3 | D: Signed Cusomer Acceptance Form 3 | manual | 1d | 2016-03-30 | 2016-03-30 |  | start no earlier than 2016-03-30 |  |
| 465 | 2.3.6.5.5 | AERB | manual | 1d | 2015-09-30 | 2015-09-30 |  |  |  |
| 466 | 2.3.6.5.6 | SEDR | manual | 1d | 2015-09-30 | 2015-09-30 |  |  |  |
| 467 | 2.3.6.5.7 | ESE | manual | 1d | 2015-09-30 | 2015-09-30 |  |  |  |
| 468 | 2.3.6.5.8 | ATO Approval | manual | 11d | 2016-03-07 | 2016-03-21 |  |  |  |
| 469 | 2.3.6.5.9 | **D: IOC Entry Request and Exit Summary** |  | 43d | 2016-01-30 | 2016-03-30 | 0d |  | 0004AS |
| 470 | 2.3.6.5.9.1 | D: IOC Entry Request and Exit Summary 1 | manual | 1d | 2016-01-30 | 2016-01-30 |  | start no earlier than 2016-01-30 |  |
| 471 | 2.3.6.5.9.2 | D: IOC Entry Request and Exit Summary 2 | manual | 1d | 2016-02-29 | 2016-02-29 |  | start no earlier than 2016-02-29 |  |
| 472 | 2.3.6.5.9.3 | D: IOC Entry Request and Exit Summary 3 | manual | 1d | 2016-03-30 | 2016-03-30 |  | start no earlier than 2016-03-30 |  |
| 473 | 2.3.6.5.10 | PMAS Milestone 1 Review | manual | 1d | 2015-09-30 | 2015-09-30 |  |  |  |
| 474 | 2.3.6.5.11 | PMAS Milestone 2 Review | manual | 45d | 2015-09-30 | 2015-12-01 |  |  |  |
| 475 | 2.3.6.5.12 | **D: IOC Site Evaluation Defect Log and Concurrence Statement** |  | 43d | 2016-01-30 | 2016-03-30 | 0d |  | 0004AT |
| 476 | 2.3.6.5.12.1 | D: IOC Site Evaluation Defect Log and Concurrence Statement 1 | manual | 1d | 2016-01-30 | 2016-01-30 |  | start no earlier than 2016-01-30 |  |
| 477 | 2.3.6.5.12.2 | D: IOC Site Evaluation Defect Log and Concurrence Statement 2 | manual | 1d | 2016-02-29 | 2016-02-29 |  | start no earlier than 2016-02-29 |  |
| 478 | 2.3.6.5.12.3 | D: IOC Site Evaluation Defect Log and Concurrence Statement 3 | manual | 1d | 2016-03-30 | 2016-03-30 |  | start no earlier than 2016-03-30 |  |
| 479 | 2.3.6.6 | **AITC Release** |  | 126d | 2015-09-30 | 2016-03-23 |  |  |  |
| 480 | 2.3.6.6.1 | Complete Networking RFC | manual | 45d | 2015-09-30 | 2015-12-01 |  |  |  |
| 481 | 2.3.6.6.2 | Pre-Production Readiness Review | manual | 120d | 2015-09-30 | 2016-03-15 |  |  |  |
| 482 | 2.3.6.6.3 | Pre-Production Release | manual | 3d | 2016-03-15 | 2016-03-17 |  |  |  |
| 483 | 2.3.6.6.4 | Production Readiness Review | milestone, manual | 0d | 2016-03-17 | 2016-03-17 |  |  |  |
| 484 | 2.3.6.6.5 | Production Release | manual | 3d | 2016-03-17 | 2016-03-21 |  |  |  |
| 485 | 2.3.6.6.6 | M: Deployment | milestone, manual | 0d | 2016-03-22 | 2016-03-22 |  |  |  |

| ID | WBS | Task | Type | Duration | Start | Finish | Total slack | Constraint | Task ID |
| --- | --- | --- | --- | --- | --- | --- | --- | --- | --- |
| 486 | 2.3.7 | **Milestone 3 (MS3) Review** |  | 90d | 2015-09-30 | 2016-02-02 |  |  |  |
| 487 | 2.3.7.1 | Schedule Milestone 3 Review | manual | 1d | 2015-09-30 | 2015-09-30 |  |  |  |
| 488 | 2.3.7.2 | Prepare MS3 Review Brief | manual | 10d | 2015-09-30 | 2015-10-13 |  |  |  |
| 489 | 2.3.7.3 | Conduct MS3 Meeting (Pre-Brief) | manual | 1d | 2015-09-30 | 2015-09-30 |  |  |  |
| 490 | 2.3.7.4 | Conduct Milestone 3 Review and Deliver Brief | manual | 1d | 2015-09-30 | 2015-09-30 |  |  |  |
| 491 | 2.3.7.5 | **D: Implementation Report** |  | 88d | 2015-11-30 | 2016-03-30 | 0d |  | 0005AB |
| 492 | 2.3.7.5.1 | D: Implementation Report 1 | manual | 1d | 2015-11-30 | 2015-11-30 |  | start no earlier than 2015-11-30 |  |
| 493 | 2.3.7.5.2 | D: Implementation Report 2 | manual | 1d | 2015-12-30 | 2015-12-30 |  | start no earlier than 2015-12-30 |  |
| 494 | 2.3.7.5.3 | D: Implementation Report 3 | manual | 1d | 2016-01-30 | 2016-01-30 |  | start no earlier than 2016-01-30 |  |
| 495 | 2.3.7.5.4 | D: Implementation Report 4 | manual | 1d | 2016-02-29 | 2016-02-29 |  | start no earlier than 2016-02-29 |  |
| 496 | 2.3.7.5.5 | D: Implementation Report 5 | manual | 1d | 2016-03-30 | 2016-03-30 |  | start no earlier than 2016-03-30 |  |
| 497 | 2.3.7.6 | D: System Acceptance Report | manual | 90d | 2015-09-30 | 2016-02-02 |  |  |  |
| 498 | 2.3.7.7 | M: Milestone 3 Review | manual | 1d | 2015-09-30 | 2015-09-30 |  |  |  |
| 499 | 2.3.8 | **Operational Support** |  | 226d | 2015-09-30 | 2016-08-10 |  |  |  |
| 500 | 2.3.8.1 | DEV. Environment Maintenance | manual | 226d | 2015-09-30 | 2016-08-10 |  |  |  |
| 501 | 2.3.8.2 | SQA Environment Maintenance | manual | 226d | 2015-09-30 | 2016-08-10 |  |  |  |
| 502 | 2.3.8.3 | Working Group Updates | manual | 1d | 2015-09-30 | 2015-09-30 |  |  |  |
| 503 | 2.3.9 | **Milestone 4 (MS4) Review** |  | 130d | 2015-09-30 | 2016-03-29 |  |  |  |
| 504 | 2.3.9.1 | Schedule Milestone 4 Review | manual | 1d | 2016-01-11 | 2016-01-11 |  |  |  |
| 505 | 2.3.9.2 | **D: Prepare Lesson's Learned Reports** |  | 88d | 2015-11-30 | 2016-03-30 | 0d |  | 0005AA |
| 506 | 2.3.9.2.1 | D: Prepare Lesson's Learned Reports 1 | manual | 1d | 2015-11-30 | 2015-11-30 |  | start no earlier than 2015-11-30 |  |
| 507 | 2.3.9.2.2 | D: Prepare Lesson's Learned Reports 2 | manual | 1d | 2015-12-30 | 2015-12-30 |  | start no earlier than 2015-12-30 |  |
| 508 | 2.3.9.2.3 | D: Prepare Lesson's Learned Reports 3 | manual | 1d | 2016-01-30 | 2016-01-30 |  | start no earlier than 2016-01-30 |  |
| 509 | 2.3.9.2.4 | D: Prepare Lesson's Learned Reports 4 | manual | 1d | 2016-02-29 | 2016-02-29 |  | start no earlier than 2016-02-29 |  |
| 510 | 2.3.9.2.5 | D: Prepare Lesson's Learned Reports 5 | manual | 1d | 2016-03-30 | 2016-03-30 |  | start no earlier than 2016-03-30 |  |
| 511 | 2.3.9.3 | Prepare MS4 Review Brief | manual | 5d | 2016-03-14 | 2016-03-18 |  |  |  |
| 512 | 2.3.9.4 | Conduct MS4 Meeting (Pre-Brief) | manual | 1d | 2016-03-21 | 2016-03-21 |  |  |  |
| 513 | 2.3.9.5 | Conduct Milestone 4 Review and Deliver Brief | manual | 1d | 2016-03-25 | 2016-03-25 |  |  |  |
| 514 | 2.3.9.6 | M: Milestone 4 Review | manual | 1d | 2016-03-25 | 2016-03-25 |  |  |  |
| 515 | 2.3.10 | M: Project Close | milestone, manual | 0d | 2016-03-30 | 2016-03-30 |  |  |  |
